# ProjectPlan

Schedule from MS Project, 2012-08-22 to 2012-12-07, A marks actual dates.

## Calendars

- Standard: Mon-Fri 08:00-12:00, 13:00-17:00; Sat-Sun off.

## Schedule

| ID | Task | Type | Duration | Start | Finish | Predecessors | Complete | Constraint |
| --- | --- | --- | --- | --- | --- | --- | --- | --- |
| 1 | Brainstorming | manual | 2d | 2012-08-22 A | 2012-08-23 A |  | 100% |  |
| 2 | Preliminary Schematic | manual | 6d | 2012-08-22 A | 2012-08-29 A | 1 | 100% |  |
| 3 | Bill of Materials | manual | 7d | 2012-08-22 A | 2012-08-30 A | 2 | 100% |  |
| 4 | Order Parts | manual | 2d | 2012-08-30 A | 2012-08-31 A | 3 | 100% |  |
| 5 | Breadboard Proof of Concept | manual | 10d | 2012-08-31 A | 2012-09-13 A | 4, 2 | 100% |  |
| 6 | Develop Product Specification | manual | 4d | 2012-09-10 A | 2012-09-13 A | 3 | 100% | finish no earlier than 2012-09-13 |
| 7 | Gant Chart | manual | 5d | 2012-09-06 A | 2012-09-12 A |  | 100% |  |
| 8 | Project Proposal | manual | 4.8w | 2012-09-13 A | 2012-10-16 A | 7 | 100% | finish no earlier than 2012-10-03 |
| 9 | Project Plan Presentation | manual | 2d | 2012-10-17 A | 2012-10-18 A | 8 | 100% | start no earlier than 2012-10-17 |
| 10 | Create PCB Packages | manual | 5d | 2012-09-06 A | 2012-09-12 A | 3 | 100% |  |
| 11 | Place Parts on PCB | manual | 5d | 2012-09-13 A | 2012-09-19 A | 2 | 100% |  |
| 12 | Route Parts on PCB | manual | 1d | 2012-09-19 A | 2012-09-19 A | 11 | 100% | start no earlier than 2012-09-19 |
| 13 | Order PCBs - Wait for Arrival | manual | 3w | 2012-09-20 A | 2012-10-10 A | 10, 11, 12 | 100% |  |
| 14 | Develop Firmware | manual | 12w | 2012-08-31 A | 2012-11-22 A | 2 | 100% |  |
| 15 | Make Radio Interface Cables | manual | 18d | 2012-09-27 A | 2012-10-22 A |  | 100% | finish no earlier than 2012-10-04 |
| 16 | Populate PCB | manual | 4d | 2012-10-10 A | 2012-10-15 A | 13 | 100% |  |
| 17 | Buy Enclosures | manual | 1d | 2012-09-21 A | 2012-09-21 A | 11 | 100% | start no earlier than 2012-09-21 |
| 18 | Schematic - Rev B | manual | 5d | 2012-10-10 A | 2012-10-16 A |  | 100% |  |
| 19 | Layout - Rev B | manual | 5d | 2012-10-10 A | 2012-10-16 A |  | 100% |  |
| 20 | Bill of Materials - Rev B | manual | 1d | 2012-10-16 A | 2012-10-16 A | 18 | 100% |  |
| 21 | Order Parts - Rev B | manual | 2d | 2012-10-18 A | 2012-10-19 A | 20 | 100% |  |
| 22 | Order PCBs & Wait for Arrival - Rev B | manual | 11d | 2012-10-18 A | 2012-11-01 A | 19 | 100% |  |
| 23 | Populate Boards - Rev B | manual | 3d | 2012-11-02 A | 2012-11-06 A | 21, 22 | 100% |  |
| 24 | Assemble Enclosure | manual | 1w | 2012-11-07 A | 2012-11-13 A | 17, 23 | 100% |  |
| 25 | Write Report | manual | 13d | 2012-11-14 A | 2012-11-30 A | 24 | 100% |  |
| 26 | Test/Debug/Improve/Fix | manual | 11d | 2012-11-23 A | 2012-12-07 A |  | 100% |  |
